# UniRentHubWBS_KPI_Aziendale

Schedule from MS Project, 2023-10-16 to 2024-10-16, status date 2024-01-18, costs in €, A marks actual dates.

## Calendars

- Standard: Mon-Fri 09:00-13:00, 14:00-18:00; Sat-Sun off. Exceptions (off unless hours are given): 2023-10-22 09:00-13:00, 14:00-18:00, 2023-11-19 09:00-13:00, 14:00-18:00, 2023-11-26 09:00-13:00, 14:00-18:00, 2023-12-02 to 2023-12-03 09:00-13:00, 14:00-18:00, 2023-12-10 09:00-13:00, 14:00-18:00, 2023-12-23 to 2023-12-24 09:00-13:00, 14:00-18:00, 2023-12-30 09:00-13:00, 14:00-18:00.

## Resources

| Resource |
| --- |
| Antonio Albanese |
| Francesco Pio Contaldo |
| Cristyan Esposito |
| Iliano Fasolino |
| Marco Greco |
| Giuseppe Pio Sorrentino |

## Schedule

| ID | WBS | Task | Type | Duration | Start | Finish | Predecessors | Complete | Actual finish | Baseline start | Baseline finish | Baseline duration | Constraint | Deadline | Resources | Work | Actual work | Cost | Baseline cost | Actual cost | Accoutable |
| --- | --- | --- | --- | --- | --- | --- | --- | --- | --- | --- | --- | --- | --- | --- | --- | --- | --- | --- | --- | --- | --- |
| 1 | 1 | **UniRentHub first release** |  | 78d? | 2023-10-16 A | 2024-01-18 |  | 100% | 2024-01-17 | 2023-10-16 | 2024-01-18 | 75d? |  | 2024-01-18 |  | 257.37h | 257.37h | 3,344.06 | 3,900 | 3,344.05 |  |
| 2 | 1.1 | **Project Graphic** |  | 6d | 2023-10-16 A | 2023-10-22 A |  | 100% |  | 2023-10-16 | 2023-10-22 | 6d |  |  |  | 4.5h | 4.5h | 58.5 | 65 | 58.5 |  |
| 3 | 1.1.1 | Logo |  | 0.05d | 2023-10-16 A | 2023-10-16 A |  | 100% |  | 2023-10-16 | 2023-10-22 | 6d | finish no earlier than 2023-10-22 | 2023-10-23 | Antonio Albanese; Cristyan Esposito; Francesco Pio Contaldo; Giuseppe Pio Sorrentino; Iliano Fasolino; Marco Greco | 2.5h | 2.5h | 32.5 | 39 | 32.5 | I. Fasolino |
| 4 | 1.1.2 | Palette |  | 6d | 2023-10-16 A | 2023-10-22 A |  | 100% |  | 2023-10-16 | 2023-10-22 | 6d | finish no earlier than 2023-10-22 |  | Antonio Albanese; Cristyan Esposito; Francesco Pio Contaldo; Giuseppe Pio Sorrentino; Iliano Fasolino; Marco Greco | 2h | 2h | 26 | 26 | 26 | F. Contaldo |
| 5 | 1.2 | **RAD** |  | 30d | 2023-10-23 A | 2023-11-29 A |  | 100% |  | 2023-10-23 | 2023-11-29 | 30d? |  |  |  | 38.56h | 38.56h | 499.52 | 689 | 499.52 |  |
| 6 | 1.2.1 | **Current system** |  | 10d | 2023-10-23 A | 2023-11-03 A |  | 100% |  | 2023-10-23 | 2023-11-05 | 10d |  |  |  | 3h | 3h | 39 | 39 | 39 |  |
| 7 | 1.2.1.1 | Current system scenario |  | 5.12d | 2023-10-23 A | 2023-10-30 A |  | 100% |  | 2023-10-23 | 2023-10-30 | 5.12d | finish no later than 2023-10-30 | 2023-10-30 | Antonio Albanese; Cristyan Esposito; Francesco Pio Contaldo; Giuseppe Pio Sorrentino; Iliano Fasolino; Marco Greco | 2h | 2h | 26 | 26 | 26 | A. Albanese |
| 8 | 1.2.1.2 | Current system activity diagrams |  | 0.81d | 2023-10-30 A | 2023-11-03 A | 7 | 100% |  | 2023-10-30 | 2023-11-05 | 0.81d | finish no earlier than 2023-11-05 |  | Antonio Albanese; Cristyan Esposito; Francesco Pio Contaldo; Giuseppe Pio Sorrentino; Iliano Fasolino; Marco Greco | 1h | 1h | 13 | 13 | 13 | C. Esposito |
| 9 | 1.2.2 | **Requirement Elicitation** |  | 12d | 2023-10-30 A | 2023-11-14 A |  | 100% |  | 2023-10-30 | 2023-11-14 | 12d |  |  |  | 17.17h | 17.17h | 221.45 | 286 | 221.45 |  |
| 10 | 1.2.2.1 | Define actors |  | 7d | 2023-11-06 A | 2023-11-14 A |  | 100% |  | 2023-11-06 | 2023-11-14 | 7d | finish no earlier than 2023-11-14 |  | Iliano Fasolino; Cristyan Esposito | 0.27h | 0.27h | 1.75 | 6.5 | 1.75 | M. Greco |
| 11 | 1.2.2.2 | Scenarios |  | 5.01d | 2023-10-30 A | 2023-11-09 A |  | 100% |  | 2023-10-30 | 2023-11-09 | 9d | finish no earlier than 2023-11-09 |  | Antonio Albanese; Cristyan Esposito; Francesco Pio Contaldo; Giuseppe Pio Sorrentino; Iliano Fasolino; Marco Greco | 4.75h | 4.75h | 61.75 | 78 | 61.75 | G. Sorrentino |
| 12 | 1.2.2.3 | Activity diagrams |  | 5d | 2023-11-06 A | 2023-11-14 A | 11 | 100% |  | 2023-11-06 | 2023-11-14 | 5d | finish no earlier than 2023-11-14 |  | Antonio Albanese; Cristyan Esposito; Francesco Pio Contaldo; Iliano Fasolino | 1.5h | 1.5h | 19.5 | 19.5 | 19.5 | A. Albanese |
| 13 | 1.2.2.4 | Use cases |  | 6.52d | 2023-11-06 A | 2023-11-14 A | 11, 10 | 100% |  | 2023-11-06 | 2023-11-14 | 7d | finish no earlier than 2023-11-13 |  | Antonio Albanese; Cristyan Esposito; Francesco Pio Contaldo; Giuseppe Pio Sorrentino; Iliano Fasolino; Marco Greco | 5.59h | 5.59h | 72.67 | 78 | 72.67 | M. Greco |
| 14 | 1.2.2.5 | **Define requirements** |  | 7d | 2023-11-06 A | 2023-11-14 A |  | 100% |  | 2023-11-06 | 2023-11-14 | 7d |  |  |  | 5.06h | 5.06h | 65.78 | 104 | 65.78 |  |
| 15 | 1.2.2.5.1 | Define functional requirements |  | 7d | 2023-11-06 A | 2023-11-14 A | 11, 13 | 100% |  | 2023-11-06 | 2023-11-14 | 7d |  |  | Antonio Albanese; Cristyan Esposito; Francesco Pio Contaldo; Giuseppe Pio Sorrentino; Iliano Fasolino; Marco Greco | 3.23h | 3.23h | 41.99 | 65 | 41.99 | C. Esposito |
| 16 | 1.2.2.5.2 | Define non functional requirements |  | 0.48d | 2023-11-06 A | 2023-11-14 A | 11, 13 | 100% |  | 2023-11-06 | 2023-11-14 | 7d |  |  | Antonio Albanese; Cristyan Esposito; Francesco Pio Contaldo; Giuseppe Pio Sorrentino; Iliano Fasolino; Marco Greco | 1.83h | 1.83h | 23.79 | 39 | 23.79 | I. Fasolino |
| 17 | 1.2.3 | **Requirement Analisys** |  | 11.74d | 2023-11-13 A | 2023-11-26 A |  | 100% |  | 2023-11-13 | 2023-11-26 | 12d |  |  |  | 10.39h | 10.39h | 135.07 | 260 | 135.07 |  |
| 18 | 1.2.3.1 | **Define Model Objects** |  | 11.59d | 2023-11-13 A | 2023-11-26 A |  | 100% |  | 2023-11-13 | 2023-11-26 | 12d |  |  |  | 4.5h | 4.5h | 58.5 | 104 | 58.5 |  |
| 19 | 1.2.3.1.1 | Define Class Diagram |  | 5.59d | 2023-11-20 A | 2023-11-26 A | 20 | 100% |  | 2023-11-20 | 2023-11-26 | 6d | finish no earlier than 2023-11-26 |  | Cristyan Esposito; Francesco Pio Contaldo; Iliano Fasolino | 2.33h | 2.33h | 30.29 | 65 | 30.29 | F. Contaldo |
| 20 | 1.2.3.1.2 | Define Boundary, Control and Entity objects | manual | 6d | 2023-11-13 A | 2023-11-19 A |  | 100% |  | 2023-11-13 | 2023-11-19 | 6d | finish no earlier than 2023-11-19 |  | Antonio Albanese; Cristyan Esposito; Francesco Pio Contaldo; Giuseppe Pio Sorrentino; Iliano Fasolino; Marco Greco | 2.17h | 2.17h | 28.21 | 39 | 28.21 | G. Sorrentino |
| 21 | 1.2.3.2 | **Define Dynamic Model** |  | 11.74d | 2023-11-13 A | 2023-11-26 A |  | 100% |  | 2023-11-13 | 2023-11-26 | 12d |  |  |  | 5.89h | 5.89h | 76.57 | 156 | 76.57 |  |
| 22 | 1.2.3.2.1 | Sequence Diagrams |  | 5.74d | 2023-11-20 A | 2023-11-26 A | 20, 13 | 100% |  | 2023-11-20 | 2023-11-26 | 6d | finish no earlier than 2023-11-26 |  | Antonio Albanese; Cristyan Esposito; Francesco Pio Contaldo; Giuseppe Pio Sorrentino; Iliano Fasolino; Marco Greco | 2.5h | 2.5h | 32.5 | 39 | 32.5 | A. Albanese |
| 23 | 1.2.3.2.2 | Statechart Diagram | manual | 5d | 2023-11-13 A | 2023-11-19 A | 13, 20 | 100% |  | 2023-11-13 | 2023-11-19 | 6d | finish no earlier than 2023-11-19 |  | Marco Greco; Giuseppe Pio Sorrentino | 0.75h | 0.75h | 9.75 | 13 | 9.75 | G. Sorrentino |
| 24 | 1.2.3.2.3 | Navigational path | manual | 2.63d | 2023-11-13 A | 2023-11-19 A | 13, 20 | 100% |  | 2023-11-13 | 2023-11-19 | 6d | finish no earlier than 2023-11-19 |  | Antonio Albanese; Cristyan Esposito; Francesco Pio Contaldo; Giuseppe Pio Sorrentino; Iliano Fasolino; Marco Greco | 1.37h | 1.37h | 17.81 | 26 | 17.81 | F. Contaldo |
| 25 | 1.2.3.2.4 | Mockups | manual | 4.94d | 2023-11-13 A | 2023-11-19 A | 24 | 100% |  | 2023-11-13 | 2023-11-19 | 6d | finish no earlier than 2023-11-19 |  | Antonio Albanese; Cristyan Esposito; Francesco Pio Contaldo; Giuseppe Pio Sorrentino; Iliano Fasolino; Marco Greco | 1.27h | 1.27h | 16.51 | 78 | 16.51 | I. Fasolino |
| 26 | 1.2.4 | Writing RAD | manual | 12d | 2023-11-13 A | 2023-11-26 A | 9, 17, 6 | 100% |  | 2023-11-13 | 2023-11-26 | 12d | start no earlier than 2023-11-13 |  | Antonio Albanese; Cristyan Esposito; Francesco Pio Contaldo; Giuseppe Pio Sorrentino; Iliano Fasolino; Marco Greco | 5h | 5h | 65 | 65 | 65 | M. Greco |
| 27 | 1.2.5 | RAD review | manual | 3d | 2023-11-27 A | 2023-11-29 A | 26 | 100% |  | 2023-11-27 | 2023-11-29 | 3d? | finish no earlier than 2023-11-29 |  | Cristyan Esposito; Francesco Pio Contaldo | 3h | 3h | 39 | 39 | 39 | C. Esposito |

| ID | WBS | Task | Type | Duration | Start | Finish | Predecessors | Complete | Baseline start | Baseline finish | Baseline duration | Constraint | Resources | Work | Actual work | Cost | Baseline cost | Actual cost | Accoutable |
| --- | --- | --- | --- | --- | --- | --- | --- | --- | --- | --- | --- | --- | --- | --- | --- | --- | --- | --- | --- |
| 28 | 1.3 | **SDD** |  | 13.06d? | 2023-11-20 A | 2023-12-04 A |  | 100% | 2023-11-20 | 2023-12-05 | 14d? |  |  | 21.33h | 21.33h | 277.31 | 351 | 277.31 |  |
| 29 | 1.3.1 | Define Design Goals |  | 6d | 2023-11-20 A | 2023-11-26 A | 16 | 100% | 2023-11-20 | 2023-11-26 | 6d | start no earlier than 2023-11-20 | Antonio Albanese; Cristyan Esposito; Francesco Pio Contaldo; Giuseppe Pio Sorrentino; Iliano Fasolino; Marco Greco | 2h | 2h | 26 | 26 | 26 | A. Albanese |
| 30 | 1.3.2 | **Layering and Partitioning** |  | 5.5d | 2023-11-20 A | 2023-11-26 A |  | 100% | 2023-11-20 | 2023-11-26 | 6d |  |  | 1.42h | 1.42h | 18.48 | 39 | 18.48 |  |
| 31 | 1.3.2.1 | Define project layers |  | 5.5d | 2023-11-20 A | 2023-11-26 A |  | 100% | 2023-11-20 | 2023-11-26 | 6d | finish no earlier than 2023-11-26 | Cristyan Esposito; Marco Greco | 0.67h | 0.67h | 8.73 | 13 | 8.73 | C. Esposito |
| 32 | 1.3.2.2 | Define subsystems | manual | 2.25d | 2023-11-20 A | 2023-11-22 A | 31, 15 | 100% | 2023-11-20 | 2023-11-26 | 6d | start no earlier than 2023-11-20 | Cristyan Esposito; Marco Greco; Giuseppe Pio Sorrentino | 0.75h | 0.75h | 9.75 | 26 | 9.75 | M. Greco |
| 33 | 1.3.3 | Define Project Architecture |  | 5d | 2023-11-20 A | 2023-12-01 A |  | 100% | 2023-11-20 | 2023-11-26 | 6d | finish no earlier than 2023-12-01 | Marco Greco; Antonio Albanese | 0.75h | 0.75h | 9.75 | 26 | 9.75 | I. Fasolino |
| 34 | 1.3.4 | **Persistence Data** |  | 12d | 2023-11-20 A | 2023-12-02 A |  | 100% | 2023-11-20 | 2023-11-26 | 6d |  |  | 8.25h | 8.25h | 107.25 | 123.5 | 107.25 |  |
| 35 | 1.3.4.1 | Define Persistence Entities |  | 0.41d | 2023-11-20 A | 2023-11-26 A | 20, 19 | 100% | 2023-11-20 | 2023-11-26 | 6d | finish no earlier than 2023-11-26 | Giuseppe Pio Sorrentino; Iliano Fasolino; Marco Greco | 1.25h | 1.25h | 16.25 | 26 | 16.25 | G. Sorrentino |
| 36 | 1.3.4.2 | **Define Databases Schema** |  | 12d | 2023-11-20 A | 2023-12-02 A |  | 100% | 2023-11-20 | 2023-11-26 | 6d |  |  | 7h | 7h | 91 | 97.5 | 91 |  |
| 37 | 1.3.4.2.1 | Define ER Schema | manual | 6d | 2023-11-20 A | 2023-11-26 A | 35, 19 | 100% | 2023-11-20 | 2023-11-26 | 6d | start no earlier than 2023-11-20 | Francesco Pio Contaldo; Antonio Albanese; Cristyan Esposito; Giuseppe Pio Sorrentino; Iliano Fasolino; Marco Greco | 6h | 6h | 78 | 78 | 78 | F. Contaldo |
| 38 | 1.3.4.2.2 | Define Logic Data Model |  | 5d | 2023-11-20 A | 2023-12-02 A | 37 | 100% | 2023-11-20 | 2023-11-26 | 6d | finish no earlier than 2023-12-02 | Antonio Albanese; Giuseppe Pio Sorrentino | 1h | 1h | 13 | 19.5 | 13 | C. Esposito |
| 39 | 1.3.5 | **Security** |  | 6d? | 2023-11-27 A | 2023-12-02 A |  | 100% | 2023-11-27 | 2023-12-03 | 6d? |  |  | 4.66h | 4.66h | 60.58 | 78 | 60.58 |  |
| 40 | 1.3.5.1 | Define System Access Control |  | 5d | 2023-11-27 A | 2023-12-01 A | 15, 16, 29 | 100% | 2023-11-27 | 2023-12-03 | 6d | finish no earlier than 2023-12-01 | Cristyan Esposito; Francesco Pio Contaldo | 0.66h | 0.66h | 8.58 | 13 | 8.58 | A. Albanese |
| 41 | 1.3.5.2 | Define Access Control Matrix |  | 6d? | 2023-11-27 A | 2023-12-02 A | 10, 15, 20, 32 | 100% | 2023-11-27 | 2023-12-03 | 6d? | finish no earlier than 2023-12-02 | Cristyan Esposito; Francesco Pio Contaldo | 3h | 3h | 39 | 52 | 39 | F. Contaldo |
| 42 | 1.3.5.3 | Define how protect sensitive data |  | 6d? | 2023-11-27 A | 2023-12-02 A | 29 | 100% | 2023-11-27 | 2023-12-03 | 6d? | finish no earlier than 2023-12-02 | Iliano Fasolino; Giuseppe Pio Sorrentino | 1h | 1h | 13 | 13 | 13 | I. Fasolino |
| 43 | 1.3.6 | Define Software Control Flow Type |  | 6d? | 2023-11-27 A | 2023-12-02 A |  | 100% | 2023-11-27 | 2023-12-03 | 6d? | finish no earlier than 2023-12-02 | Antonio Albanese | 0.25h | 0.25h | 3.25 | 6.5 | 3.25 | M. Greco |
| 44 | 1.3.7 | Boundary Condition |  | 7d? | 2023-11-27 A | 2023-12-03 A | 16 | 100% | 2023-11-27 | 2023-12-03 | 6d? | finish no earlier than 2023-12-03 | Francesco Pio Contaldo; Giuseppe Pio Sorrentino; Iliano Fasolino; Marco Greco | 1h | 1h | 13 | 13 | 13 | G. Sorrentino |
| 45 | 1.3.8 | Writing SDD | manual | 12d | 2023-11-20 A | 2023-12-03 A | 29, 30, 33, 34, 39, 43, 44 | 100% | 2023-11-20 | 2023-12-03 | 12d | start no earlier than 2023-11-20 | Antonio Albanese; Cristyan Esposito; Francesco Pio Contaldo; Giuseppe Pio Sorrentino; Iliano Fasolino; Marco Greco | 2h | 2h | 26 | 26 | 26 | A. Albanese |
| 46 | 1.3.9 | SDD review |  | 0.06d? | 2023-12-04 A | 2023-12-04 A | 45 | 100% | 2023-12-04 | 2023-12-05 | 2d? | finish no earlier than 2023-12-05 | Iliano Fasolino; Giuseppe Pio Sorrentino | 1h | 1h | 13 | 13 | 13 | I. Fasolino |
| 47 | 1.4 | **ODD** |  | 18d? | 2023-12-11 A | 2023-12-30 A |  | 100% | 2023-12-11 | 2023-12-28 | 14.12d? |  |  | 20.33h | 20.33h | 264.29 | 325 | 264.29 |  |
| 48 | 1.4.1 | Define Object Design Goals |  | 10.01d? | 2023-12-11 A | 2023-12-23 A | 29 | 100% | 2023-12-11 | 2023-12-24 | 9.5d? | finish no earlier than 2023-12-22 | Antonio Albanese; Cristyan Esposito; Francesco Pio Contaldo; Giuseppe Pio Sorrentino; Iliano Fasolino; Marco Greco | 3.33h | 3.33h | 43.29 | 52 | 43.29 | C. Esposito |
| 49 | 1.4.2 | Trade-offs |  | 11d | 2023-12-11 A | 2023-12-23 A | 48 | 100% | 2023-12-11 | 2023-12-24 | 9.5d? | start no earlier than 2023-12-11 | Giuseppe Pio Sorrentino | 2h | 2h | 26 | 52 | 26 | G. Sorrentino |
| 50 | 1.4.3 | **Project Structure** |  | 16d | 2023-12-11 A | 2023-12-28 A |  | 100% | 2023-12-11 | 2023-12-24 | 11d? |  |  | 8h | 8h | 104 | 104 | 104 |  |
| 51 | 1.4.3.1 | Define Project Packages |  | 14.38d | 2023-12-11 A | 2023-12-28 A | 32, 20 | 100% | 2023-12-11 | 2023-12-24 | 9.5d | finish no earlier than 2023-12-28 | Cristyan Esposito | 2h | 2h | 26 | 26 | 26 | A. Albanese |
| 52 | 1.4.3.2 | Define Class attributes and signatures |  | 11d | 2023-12-11 A | 2023-12-23 A | 20, 38 | 100% | 2023-12-11 | 2023-12-24 | 11d | finish no earlier than 2023-12-23 | Antonio Albanese; Cristyan Esposito; Francesco Pio Contaldo; Giuseppe Pio Sorrentino; Iliano Fasolino; Marco Greco | 6h | 6h | 78 | 78 | 78 | F. Contaldo |
| 53 | 1.4.4 | Define Design Pattern |  | 16.38d? | 2023-12-11 A | 2023-12-29 A |  | 100% | 2023-12-11 | 2023-12-24 | 9.5d? | finish no earlier than 2023-12-29 | Cristyan Esposito; Marco Greco | 4h | 4h | 52 | 78 | 52 | M. Greco |
| 54 | 1.4.5 | Writing ODD | manual | 12d | 2023-12-11 A | 2023-12-30 A | 49, 50, 53, 48 | 100% | 2023-12-11 | 2023-12-24 | 11d | start no earlier than 2023-12-11 | Antonio Albanese; Cristyan Esposito; Francesco Pio Contaldo; Giuseppe Pio Sorrentino; Iliano Fasolino; Marco Greco | 2h | 2h | 26 | 26 | 26 | I. Fasolino |
| 55 | 1.4.6 | ODD review | manual | 3.5d | 2023-12-27 A | 2023-12-30 A | 54 | 100% | 2023-12-27 | 2023-12-28 | 0.62d? | finish no earlier than 2023-12-30 | Antonio Albanese; Marco Greco | 1h | 1h | 13 | 13 | 13 | A. Albanese |

| ID | WBS | Task | Type | Duration | Start | Finish | Predecessors | Complete | Baseline start | Baseline finish | Baseline duration | Constraint | Resources | Work | Actual work | Cost | Baseline cost | Actual cost | Accoutable |
| --- | --- | --- | --- | --- | --- | --- | --- | --- | --- | --- | --- | --- | --- | --- | --- | --- | --- | --- | --- |
| 56 | 1.5 | **Implementation** |  | 22d? | 2023-12-19 A | 2024-01-12 A |  | 100% | 2023-12-19 | 2024-01-13 | 20d? |  |  | 134.3h | 134.3h | 1,745.89 | 1,950 | 1,745.89 |  |
| 57 | 1.5.1 | Build database |  | 4d | 2023-12-19 A | 2023-12-22 A | 38 | 100% | 2023-12-19 | 2023-12-22 | 4d | finish no earlier than 2023-12-22 | Iliano Fasolino; Francesco Pio Contaldo; Cristyan Esposito | 15h | 15h | 195 | 195 | 195 | F. Contaldo |
| 58 | 1.5.2 | **Implementation system requirements** |  | 19.74d | 2023-12-19 A | 2024-01-10 A |  | 100% | 2023-12-19 | 2024-01-10 | 18d |  |  | 112.5h | 112.5h | 1,462.49 | 1,625 | 1,462.49 |  |
| 59 | 1.5.2.1 | Developing front-end |  | 17.26d | 2023-12-19 A | 2024-01-10 A | 25 | 100% | 2023-12-19 | 2024-01-10 | 18d | finish no earlier than 2024-01-10 | Antonio Albanese; Cristyan Esposito; Francesco Pio Contaldo; Giuseppe Pio Sorrentino; Iliano Fasolino; Marco Greco | 47h | 47h | 610.99 | 650 | 610.99 | I. Fasolino |
| 60 | 1.5.2.2 | Developing back-end | manual | 17.74d | 2023-12-19 A | 2024-01-10 A | 47 | 100% | 2023-12-19 | 2024-01-10 | 18d | start no earlier than 2023-12-19 | Antonio Albanese; Cristyan Esposito; Francesco Pio Contaldo; Giuseppe Pio Sorrentino; Iliano Fasolino; Marco Greco | 65.5h | 65.5h | 851.49 | 975 | 851.49 | M. Greco |
| 61 | 1.5.3 | **Devoloping tests** |  | 1.5d? | 2024-01-11 A | 2024-01-12 A |  | 100% | 2024-01-11 | 2024-01-13 | 1.5d? |  |  | 6.8h | 6.8h | 88.4 | 130 | 88.4 |  |
| 62 | 1.5.3.1 | Developing unit tests |  | 1.5d? | 2024-01-11 A | 2024-01-12 A | 66, 69 | 100% | 2024-01-11 | 2024-01-13 | 1.5d? | finish no earlier than 2024-01-12 | Antonio Albanese [9.2%]; Marco Greco [9.2%]; Giuseppe Pio Sorrentino [9.2%] | 3.3h | 3.3h | 42.9 | 52 | 42.9 | C. Esposito |
| 63 | 1.5.3.2 | Developing system tests |  | 1.5d? | 2024-01-11 A | 2024-01-12 A | 67, 70 | 100% | 2024-01-11 | 2024-01-13 | 1.5d? | finish no earlier than 2024-01-12 | Antonio Albanese [9.7%]; Giuseppe Pio Sorrentino [9.7%]; Marco Greco [9.7%] | 3.5h | 3.5h | 45.5 | 78 | 45.5 | G. Sorrentino |
| 64 | 1.6 | **Testing** |  | 37d? | 2023-12-04 A | 2024-01-17 A |  | 100% | 2023-12-04 | 2024-01-18 | 36d? |  |  | 28.35h | 28.35h | 368.55 | 390 | 368.55 |  |
| 65 | 1.6.1 | **Test Plan** |  | 30d? | 2023-12-04 A | 2024-01-08 A |  | 100% | 2023-12-04 | 2024-01-08 | 28d? |  |  | 8.78h | 8.78h | 114.14 | 130 | 114.14 |  |
| 66 | 1.6.1.1 | Writing Unit Test Plan Document |  | 4d | 2024-01-03 A | 2024-01-08 A | 28, 47 | 100% | 2024-01-03 | 2024-01-08 | 4d | finish no earlier than 2024-01-08 | Antonio Albanese; Cristyan Esposito; Francesco Pio Contaldo; Giuseppe Pio Sorrentino; Iliano Fasolino; Marco Greco | 3.96h | 3.96h | 51.48 | 65 | 51.48 | F. Contaldo |
| 67 | 1.6.1.2 | Writing System Test Plan Document |  | 3d? | 2023-12-04 A | 2023-12-06 A | 28 | 100% | 2023-12-04 | 2023-12-06 | 3d? | start no earlier than 2023-12-04 | Antonio Albanese; Cristyan Esposito; Francesco Pio Contaldo; Giuseppe Pio Sorrentino; Iliano Fasolino; Marco Greco | 4.82h | 4.82h | 62.66 | 65 | 62.66 | A. Albanese |
| 68 | 1.6.2 | **Writing Test Case Specification** |  | 28d? | 2023-12-07 A | 2024-01-09 A |  | 100% | 2023-12-07 | 2024-01-10 | 27d? |  |  | 7.57h | 7.57h | 98.41 | 104 | 98.41 |  |
| 69 | 1.6.2.1 | Writing Unit Test Case Specification Document |  | 1d? | 2024-01-09 A | 2024-01-09 A | 66 | 100% | 2024-01-09 | 2024-01-10 | 2d? | finish no earlier than 2024-01-09 | Antonio Albanese [8.1%]; Cristyan Esposito [8.1%]; Francesco Pio Contaldo [8.1%]; Giuseppe Pio Sorrentino [8.1%]; Iliano Fasolino [8.1%]; Marco Greco [8.1%] | 3.91h | 3.91h | 50.83 | 52 | 50.83 | C. Esposito |
| 70 | 1.6.2.2 | Writing System Test Case Specification Document |  | 3d | 2023-12-07 A | 2023-12-10 A | 67 | 100% | 2023-12-07 | 2023-12-10 | 3d | finish no earlier than 2023-12-10 | Antonio Albanese; Cristyan Esposito; Francesco Pio Contaldo; Giuseppe Pio Sorrentino; Iliano Fasolino; Marco Greco | 3.66h | 3.66h | 47.58 | 52 | 47.58 | I. Fasolino |
| 71 | 1.6.3 | Execute tests |  | 1.88d? | 2024-01-15 A | 2024-01-16 A | 62, 63 | 100% | 2024-01-15 | 2024-01-16 | 1.5d? | finish no earlier than 2024-01-16 | Marco Greco; Giuseppe Pio Sorrentino | 3h | 3h | 39 | 39 | 39 | M. Greco |
| 72 | 1.6.4 | Writing Test Incident Report | manual | 1d | 2024-01-16 A | 2024-01-16 A | 71 | 100% | 2024-01-16 | 2024-01-16 | 1d? | start no earlier than 2024-01-16 | Antonio Albanese; Cristyan Esposito; Francesco Pio Contaldo; Iliano Fasolino | 2h | 2h | 26 | 26 | 26 | G. Sorrentino |
| 73 | 1.6.5 | Writing Test Summary Report | manual | 1d | 2024-01-16 A | 2024-01-16 A | 71 | 100% | 2024-01-16 | 2024-01-16 | 1d? | start no earlier than 2024-01-16 | Cristyan Esposito; Francesco Pio Contaldo; Iliano Fasolino | 2h | 2h | 26 | 26 | 26 | M. Greco |
| 74 | 1.6.6 | Review test documents |  | 1d? | 2024-01-17 A | 2024-01-17 A | 66, 67, 69, 70, 72, 73 | 100% | 2024-01-17 | 2024-01-18 | 2d? | finish no earlier than 2024-01-17 | Cristyan Esposito; Iliano Fasolino | 5h | 5h | 65 | 65 | 65 | I. Fasolino |
| 75 | 1.7 | **Manual** |  | 2d? | 2024-01-16 A | 2024-01-17 A |  | 100% | 2024-01-16 | 2024-01-18 | 3d? |  |  | 10h | 10h | 130 | 130 | 130 |  |
| 76 | 1.7.1 | Writing User Manual |  | 2d | 2024-01-16 A | 2024-01-17 A | 56 | 100% | 2024-01-16 | 2024-01-18 | 3d | finish no earlier than 2024-01-17 | Cristyan Esposito [18.8%]; Iliano Fasolino [18.8%] | 6h | 6h | 78 | 78 | 78 | A. Albanese |
| 77 | 1.7.2 | Writing Installation Guide |  | 2d? | 2024-01-16 A | 2024-01-17 A | 56 | 100% | 2024-01-16 | 2024-01-18 | 3d? | finish no earlier than 2024-01-17 | Cristyan Esposito [12.5%]; Iliano Fasolino [12.5%] | 4h | 4h | 52 | 52 | 52 | C. Esposito |
| 78 | 2 | **UniRentHub final release** |  | 191d? | 2024-01-24 | 2024-10-16 |  |  |  | 2024-10-16 |  |  |  |  |  |  | 89,856 |  |  |
| 79 | 2.1 | RAD | manual | 191d | 2024-01-24 | 2024-10-16 | 5 |  |  | 2024-10-16 |  |  |  |  |  |  | 2,080 |  |  |
| 80 | 2.2 | SDD | manual | 191d | 2024-01-24 | 2024-10-16 | 28 |  |  | 2024-10-16 |  |  |  |  |  |  | 4,680 |  |  |
| 81 | 2.3 | ODD | manual | 191d | 2024-01-24 | 2024-10-16 | 47 |  |  | 2024-10-16 |  |  |  |  |  |  | 9,984 |  |  |
| 82 | 2.4 | Implementation | manual | 191d | 2024-01-24 | 2024-10-16 | 56 |  |  | 2024-10-16 |  |  |  |  |  |  | 48,880 |  |  |
| 83 | 2.5 | Testing | manual | 191d | 2024-01-24 | 2024-10-16 | 64 |  |  | 2024-10-16 |  |  |  |  |  |  | 23,192 |  |  |
| 84 | 2.6 | Manuali | manual | 191d | 2024-01-24 | 2024-10-16 | 75 |  |  | 2024-10-16 |  |  |  |  |  |  | 1,040 |  |  |
